# 软件开发

Schedule from MS Project, 2018-09-03 to 2020-01-02.

## Calendars

- 标准: Mon-Fri 08:00-12:00, 13:00-17:00; Sat-Sun off. Exceptions (off unless hours are given): 2018-09-24 (中秋), 2018-09-29 to 2018-09-30 08:00-12:00, 13:00-17:00 (国庆调班), 2018-10-01 to 2018-10-07 (国庆).

## Resources

| Resource |
| --- |
| 管理人员 |
| 项目经理 |
| 分析人员 |
| 开发人员 |
| 测试人员 |
| 培训人员 |
| 技术联络人员 |
| 部署小组 |

## Schedule

| ID | WBS | Task | Type | Duration | Start | Finish | Predecessors | Total slack | Free slack | Constraint | Resources | Work |
| --- | --- | --- | --- | --- | --- | --- | --- | --- | --- | --- | --- | --- |
| 1 | 1 | **项目范围规划** |  | 4d | 2018-09-03 | 2018-09-06 |  | 341d |  |  |  | 24h |
| 2 | 1.1 | 确定项目范围 |  | 3d | 2018-09-03 | 2018-09-05 |  | 345d | 0d |  | 管理人员 | 24h |
| 3 | 1.2 | 项目范围规划完成 |  | 1d | 2018-09-06 | 2018-09-06 | 2 | 345d |  |  |  |  |
| 4 | 2 | **需求** |  | 22d | 2018-09-04 | 2018-10-09 |  |  |  |  |  | 32h |
| 5 | 2.1 | 指标调研 |  | 5d | 2018-09-04 | 2018-09-10 |  | 335d | 0d | finish no earlier than 2018-09-10 |  |  |
| 6 | 2.2 | 指标探查 |  | 4d | 2018-09-11 | 2018-09-14 | 5 | 335d |  | finish no earlier than 2018-09-14 | 分析人员 | 32h |
| 7 | 2.3 | 流程梳理 |  | 2d | 2018-09-07 | 2018-09-10 |  | 339d |  | start no earlier than 2018-09-07 |  |  |
| 8 | 2.4 | 页面需求收集、分析、整理 |  | 7d | 2018-09-10 | 2018-09-18 |  | 333d |  | finish no earlier than 2018-09-18 |  |  |
| 9 | 2.5 | demo制作 |  | 5d | 2018-09-19 | 2018-09-26 |  | 328d |  | start no earlier than 2018-09-19 |  |  |
| 10 | 2.6 | 编写需求规格说明书 |  | 5d | 2018-09-25 | 2018-09-29 |  | 325d |  | start no earlier than 2018-09-23 |  |  |
| 11 | 2.7 | 需求评审 |  | 1d | 2018-09-30 | 2018-09-30 |  | 324d |  | start no earlier than 2018-09-30 |  |  |
| 12 | 3 | **设计** |  | 18d | 2018-09-20 | 2018-10-19 |  |  |  |  |  | 144h |
| 13 | 3.1 | 技术架构 |  | 5d | 2018-09-20 | 2018-09-27 |  | 0d |  |  | 技术联络人员 | 40h |
| 14 | 3.2 | 数据库设计 |  | 5d | 2018-09-28 | 2018-10-09 | 13 | 0d |  |  | 开发人员 | 40h |
| 15 | 3.3 | 接口设计 |  | 8d | 2018-10-10 | 2018-10-19 | 14 | 0d |  |  | 开发人员 | 64h |
| 16 | 4 | **开发** |  | 40d | 2018-10-08 | 2018-11-30 |  |  |  |  |  | 432h |
| 17 | 4.1 | 编写代码 |  | 39d | 2018-10-08 | 2018-11-29 |  | 15.25d | 0d | start no earlier than 2018-10-04 | 开发人员 | 312h |
| 18 | 4.2 | 开发人员测试(初步调试) |  | 15d | 2018-10-19 | 2018-11-09 | 17FS-7.5% | 15.25d | 0d |  | 开发人员 | 120h |
| 19 | 4.3 | 开发工作完毕 | milestone | 0d | 2018-11-09 | 2018-11-09 | 18 | 15.25d |  |  |  |  |
| 20 | 5 | **测试** |  | 20d | 2018-11-09 | 2018-12-06 |  |  |  |  |  | 80h |
| 21 | 5.1 | **单元测试** |  | 10d | 2018-11-09 | 2018-11-22 |  | 0d |  |  |  |  |
| 22 | 5.1.1 | 测试用例 |  | 5d | 2018-11-09 | 2018-11-15 |  | 0d |  |  |  |  |
| 23 | 5.1.2 | 单元测试完成 |  | 5d | 2018-11-16 | 2018-11-22 | 22 | 0d |  |  |  |  |
| 24 | 5.2 | **整体测试** |  | 10d | 2018-11-23 | 2018-12-06 |  | 0d |  |  |  | 80h |
| 25 | 5.2.1 | SIT测试 |  | 5d | 2018-11-23 | 2018-11-29 | 23 | 0d |  |  | 测试人员 | 40h |
| 26 | 5.2.2 | UAT测试 |  | 5d | 2018-11-30 | 2018-12-06 | 25 | 0d |  |  | 测试人员 | 40h |
| 27 | 5.2.3 | 整体测试完成 | milestone | 0d | 2018-12-06 | 2018-12-06 | 26 | 0d |  |  |  |  |

| ID | WBS | Task | Type | Duration | Start | Finish | Predecessors | Total slack | Free slack | Constraint | Resources | Work |
| --- | --- | --- | --- | --- | --- | --- | --- | --- | --- | --- | --- | --- |
| 28 | 6 | **文档** |  | 12d | 2018-11-30 | 2018-12-17 |  | 273d |  |  |  | 96h |
| 29 | 6.1 | 编写用户手册 |  | 10d | 2018-11-30 | 2018-12-13 |  | 273d | 0d | start no earlier than 2018-11-30 | 测试人员 | 80h |
| 30 | 6.2 | 根据反馈修改用户文档 |  | 2d | 2018-12-14 | 2018-12-17 | 29 | 273d | 0d |  | 测试人员 | 16h |
| 31 | 6.3 | 文档完成 | milestone | 0d | 2018-12-17 | 2018-12-17 | 30 | 273d |  |  |  |  |
| 32 | 7 | **部署** |  | 5d | 2018-12-19 | 2018-12-25 |  | 267d |  |  |  | 40h |
| 33 | 7.1 | 确定最终部署策略 |  | 1d | 2018-12-19 | 2018-12-19 |  | 267d | 0d | start no earlier than 2018-12-19 | 开发人员 | 8h |
| 34 | 7.2 | 确定部署方法 |  | 1d | 2018-12-20 | 2018-12-20 | 33 | 267d | 0d |  | 开发人员 | 8h |
| 35 | 7.3 | 获得部署所需资源 |  | 1d | 2018-12-21 | 2018-12-21 | 34 | 267d | 0d |  | 开发人员 | 8h |
| 36 | 7.4 | 培训技术支持人员 |  | 1d | 2018-12-24 | 2018-12-24 | 35 | 267d | 0d |  | 开发人员 | 8h |
| 37 | 7.5 | 部署软件 |  | 1d | 2018-12-25 | 2018-12-25 | 36 | 267d | 0d |  | 开发人员 | 8h |
| 38 | 7.6 | 部署工作完成 | milestone | 0d | 2018-12-25 | 2018-12-25 | 37 | 267d |  |  |  |  |
| 39 | 8 | **运维** |  | 261d | 2019-01-03 | 2020-01-02 |  |  |  |  |  | 2088h |
| 40 | 8.1 | 项目运维 |  | 261d | 2019-01-03 | 2020-01-02 |  | 0d |  | start no earlier than 2019-01-03 | 开发人员 | 2088h |
