# 软件开发

Schedule from MS Project, 2018-09-03 to 2020-01-02.

## Calendars

- 标准: Mon-Fri 08:00-12:00, 13:00-17:00; Sat-Sun off. Exceptions (off unless hours are given): 2018-09-24 (中秋), 2018-09-29 to 2018-09-30 08:00-12:00, 13:00-17:00 (国庆调班), 2018-10-01 to 2018-10-07 (国庆).

## Resources

| Resource |
| --- |
| 管理人员 |
| 项目经理 |
| 分析人员 |
| 开发人员 |
| 测试人员 |
| 培训人员 |
| 技术联络人员 |
| 部署小组 |
| 3 |
| 3个开发人员 |
| 2个开发人员 |
| 1个开发人员 |
| 1 |

## Schedule

| ID | WBS | Task | Duration | Start | Finish | Predecessors | Total slack | Free slack | Constraint | Resources | Work |
| --- | --- | --- | --- | --- | --- | --- | --- | --- | --- | --- | --- |
| 1 | 1 | **项目范围规划** | 4d | 2018-09-03 | 2018-09-06 |  | 341d |  |  |  | 24h |
| 2 | 1.1 | 确定项目范围 | 3d | 2018-09-03 | 2018-09-05 |  | 345d | 0d |  | 管理人员 | 24h |
| 3 | 1.2 | 项目范围规划完成 | 1d | 2018-09-06 | 2018-09-06 | 2 | 341d |  |  |  |  |
| 4 | 2 | **需求** | 27d | 2018-09-04 | 2018-10-16 |  |  |  |  |  |  |
| 5 | 2.1 | 指标调研 | 5d | 2018-09-04 | 2018-09-10 |  | 335d | 0d | finish no earlier than 2018-09-10 |  |  |
| 6 | 2.2 | 指标探查 | 4d | 2018-09-11 | 2018-09-14 | 5 | 335d |  | finish no earlier than 2018-09-14 |  |  |
| 7 | 2.3 | 流程梳理 | 2d | 2018-09-07 | 2018-09-10 |  | 339d |  | start no earlier than 2018-09-07 |  |  |
| 8 | 2.4 | 页面需求收集、分析、整理 | 11d | 2018-09-17 | 2018-09-30 |  | 324d |  | start no earlier than 2018-09-17 |  |  |
| 9 | 2.5 | demo制作 | 12d | 2018-09-19 | 2018-10-10 |  | 321d |  | finish no earlier than 2018-10-10 |  |  |
| 10 | 2.6 | 编写需求规格说明书 | 5d | 2018-10-08 | 2018-10-12 |  | 319d |  | start no earlier than 2018-10-08 |  |  |
| 11 | 2.7 | 需求评审 | 2d | 2018-10-15 | 2018-10-16 |  | 317d |  | finish no earlier than 2018-10-16 |  |  |
| 12 | 3 | **设计** | 13d | 2018-10-15 | 2018-10-31 |  |  |  |  |  | 80h |
| 13 | 3.1 | 技术架构 | 3d | 2018-10-15 | 2018-10-17 |  | 309d | 0d | finish no earlier than 2018-10-17 |  |  |
| 14 | 3.2 | 数据库设计 | 7d | 2018-10-18 | 2018-10-26 | 13 | 309d |  | finish no earlier than 2018-10-26 | 开发人员 | 56h |
| 15 | 3.3 | 接口设计 | 3d | 2018-10-29 | 2018-10-31 |  | 306d |  | finish no earlier than 2018-10-31 | 开发人员 | 24h |
| 16 | 4 | **开发** | 22d | 2018-11-01 | 2018-11-30 |  |  |  |  |  | 504h |
| 17 | 4.1 | **ETL开发** | 22d | 2018-11-01 | 2018-11-30 |  |  |  |  |  | 160h |
| 18 | 4.1.1 | Kettle任务调度搭建 | 2d | 2018-11-01 | 2018-11-02 |  | 20d | 0d |  |  |  |
| 19 | 4.1.2 | 10个系统指标开发 | 20d | 2018-11-05 | 2018-11-30 | 18 | 284d |  | start no earlier than 2018-11-05 | 2个开发人员 | 160h |
| 20 | 4.2 | **应用开发** | 22d | 2018-11-01 | 2018-11-30 |  |  |  |  |  | 344h |
| 21 | 4.2.1 | IRR模块开发 | 12d | 2018-11-01 | 2018-11-16 |  | 0d |  | start no earlier than 2018-11-01 | 2个开发人员 | 96h |
| 22 | 4.2.2 | 绩效考核开发 | 10d | 2018-11-19 | 2018-11-30 | 21 | 0d |  |  | 2个开发人员 | 80h |
| 23 | 4.2.3 | 系统管理 | 12d | 2018-11-01 | 2018-11-16 |  | 294d |  | start no earlier than 2018-11-01 | 开发人员 | 96h |
| 24 | 4.2.4 | OA单点登录 | 3d | 2018-11-01 | 2018-11-05 |  | 19d |  |  | 开发人员 | 24h |
| 25 | 4.2.5 | OA会签接口 | 3d | 2018-11-01 | 2018-11-05 |  | 303d |  | start no earlier than 2018-11-01 | 开发人员 | 24h |
| 26 | 4.2.6 | OA反馈接口 | 3d | 2018-11-06 | 2018-11-08 |  | 300d |  | start no earlier than 2018-11-06 | 开发人员 | 24h |

| ID | WBS | Task | Duration | Start | Finish | Predecessors | Total slack | Free slack | Constraint | Resources | Work |
| --- | --- | --- | --- | --- | --- | --- | --- | --- | --- | --- | --- |
| 27 | 5 | **测试** | 23d | 2018-12-03 | 2019-01-02 |  |  |  |  |  | 184h |
| 28 | 5.1 | **测试准备** | 3d | 2018-12-03 | 2018-12-05 |  |  |  |  |  |  |
| 29 | 5.1.1 | 测试用例 | 3d | 2018-12-03 | 2018-12-05 |  | 281d |  | finish no earlier than 2018-12-05 |  |  |
| 30 | 5.2 | **整体测试** | 23d | 2018-12-03 | 2019-01-02 |  |  |  |  |  | 184h |
| 31 | 5.2.1 | SIT测试 | 8d | 2018-12-03 | 2018-12-12 |  | 261d | 0d | start no earlier than 2018-12-03 | 开发人员 | 64h |
| 32 | 5.2.2 | UAT测试 | 15d | 2018-12-13 | 2019-01-02 | 31 | 261d |  | finish no earlier than 2019-01-02 | 测试人员 | 120h |
| 33 | 6 | **文档** | 7d | 2018-12-17 | 2018-12-25 |  | 267d |  |  |  | 56h |
| 34 | 6.1 | 用户手册 | 3d | 2018-12-17 | 2018-12-19 |  | 267d | 0d | finish no earlier than 2018-12-19 | 测试人员 | 24h |
| 35 | 6.2 | 运维文档 | 2d | 2018-12-20 | 2018-12-21 | 34 | 267d | 0d |  | 测试人员 | 16h |
| 36 | 6.3 | 验收材料 | 2d | 2018-12-24 | 2018-12-25 | 35 | 267d |  | finish no earlier than 2018-12-25 | 测试人员 | 16h |
| 37 | 7 | **部署** | 8d | 2018-12-25 | 2019-01-03 |  | 260d |  |  |  | 56h |
| 38 | 7.1 | 部署策略 | 2d | 2018-12-25 | 2018-12-26 |  | 261d | 0d | finish no earlier than 2018-12-26 | 开发人员 | 16h |
| 39 | 7.2 | 相关培训 | 3d | 2018-12-27 | 2018-12-31 | 38 | 261d | 1d | start no earlier than 2018-12-27 | 开发人员 | 24h |
| 40 | 7.3 | 部署软件 | 2d | 2019-01-02 | 2019-01-03 | 39 | 260d |  | finish no earlier than 2019-01-03 | 开发人员 | 16h |
| 41 | 8 | **运维** | 261d | 2019-01-03 | 2020-01-02 |  |  |  |  |  | 2088h |
| 42 | 8.1 | 项目运维 | 261d | 2019-01-03 | 2020-01-02 |  | 0d |  | start no earlier than 2019-01-03 | 开发人员 | 2088h |
