# 软件开发

Schedule from MS Project, 2018-09-03 to 2020-01-02.

## Calendars

- 标准: Mon-Fri 08:00-12:00, 13:00-17:00; Sat-Sun off. Exceptions (off unless hours are given): 2018-09-24 (中秋), 2018-09-29 to 2018-09-30 08:00-12:00, 13:00-17:00 (国庆调班), 2018-10-01 to 2018-10-07 (国庆).

## Resources

| Resource |
| --- |
| 管理人员 |
| 项目经理 |
| 分析人员 |
| 开发人员 |
| 测试人员 |
| 培训人员 |
| 技术联络人员 |
| 部署小组 |
| 3 |
| 3个开发人员 |
| 2个开发人员 |
| 1个开发人员 |
| 1 |

## Schedule

| ID | WBS | Task | Type | Duration | Start | Finish | Predecessors | Total slack | Free slack | Constraint | Resources | Work |
| --- | --- | --- | --- | --- | --- | --- | --- | --- | --- | --- | --- | --- |
| 1 | 1 | **项目范围规划** |  | 4d | 2018-09-03 | 2018-09-06 |  | 341d |  |  |  | 24h |
| 2 | 1.1 | 确定项目范围 |  | 3d | 2018-09-03 | 2018-09-05 |  | 345d | 0d |  | 管理人员 | 24h |
| 3 | 1.2 | 项目范围规划完成 |  | 1d | 2018-09-06 | 2018-09-06 | 2 | 341d |  |  |  |  |
| 4 | 2 | **需求** |  | 27d | 2018-09-04 | 2018-10-16 |  |  |  |  |  |  |
| 5 | 2.1 | 指标调研 |  | 5d | 2018-09-04 | 2018-09-10 |  | 335d | 0d | finish no earlier than 2018-09-10 |  |  |
| 6 | 2.2 | 指标探查 |  | 4d | 2018-09-11 | 2018-09-14 | 5 | 335d |  | finish no earlier than 2018-09-14 |  |  |
| 7 | 2.3 | 流程梳理 |  | 2d | 2018-09-07 | 2018-09-10 |  | 339d |  | start no earlier than 2018-09-07 |  |  |
| 8 | 2.4 | 页面需求收集、分析、整理 |  | 11d | 2018-09-17 | 2018-09-30 |  | 324d |  | start no earlier than 2018-09-17 |  |  |
| 9 | 2.5 | demo制作 |  | 12d | 2018-09-19 | 2018-10-10 |  | 321d |  | finish no earlier than 2018-10-10 |  |  |
| 10 | 2.6 | 编写需求规格说明书 |  | 5d | 2018-10-08 | 2018-10-12 |  | 319d |  | start no earlier than 2018-10-08 |  |  |
| 11 | 2.7 | 需求评审 |  | 2d | 2018-10-15 | 2018-10-16 |  | 317d |  | finish no earlier than 2018-10-16 |  |  |
| 12 | 3 | **设计** |  | 13d | 2018-10-15 | 2018-10-31 |  |  |  |  |  | 80h |
| 13 | 3.1 | 技术架构 |  | 3d | 2018-10-15 | 2018-10-17 |  | 309d | 0d | finish no earlier than 2018-10-17 |  |  |
| 14 | 3.2 | 数据库设计 |  | 7d | 2018-10-18 | 2018-10-26 | 13 | 309d |  | finish no earlier than 2018-10-26 | 开发人员 | 56h |
| 15 | 3.3 | 接口设计 |  | 3d | 2018-10-29 | 2018-10-31 |  | 306d |  | finish no earlier than 2018-10-31 | 开发人员 | 24h |
| 16 | 4 | **开发** |  | 30d | 2018-11-05 | 2018-12-14 |  |  |  |  |  | 424h |
| 17 | 4.1 | **ETL开发** |  | 30d | 2018-11-05 | 2018-12-14 |  |  |  |  |  | 208h |
| 18 | 4.1.1 | **概要设计** |  | 5d | 2018-11-05 | 2018-11-09 |  |  |  |  |  |  |
| 19 | 4.1.1.1 | ETL设计 |  | 5d? | 2018-11-05 | 2018-11-09 |  | 0d |  |  |  |  |
| 20 | 4.1.2 | **IRR指标** |  | 14d | 2018-11-05 | 2018-11-22 |  |  |  |  |  | 152h |
| 21 | 4.1.2.1 | 搭建ETL基本支持 |  | 5d | 2018-11-05 | 2018-11-09 |  | 299d |  | finish no earlier than 2018-11-09 | 2个开发人员 | 40h |
| 22 | 4.1.2.2 | 指标落地 |  | 14d? | 2018-11-05 | 2018-11-22 |  | 290d |  | finish no earlier than 2018-11-22 | 2个开发人员 | 112h |
| 23 | 4.1.3 | **绩效支持** |  | 7d? | 2018-11-23 | 2018-12-03 |  | 3d |  |  |  | 56h |
| 24 | 4.1.3.1 | 五类绩效考核明细抽取 |  | 3d? | 2018-11-23 | 2018-11-27 |  | 9d | 0d | finish no earlier than 2018-11-27 | 1个开发人员 | 24h |
| 25 | 4.1.3.2 | 五类绩效考核计算 | manual | 4d | 2018-11-28 | 2018-12-03 | 24, 21 |  |  | start no earlier than 2018-11-28 | 1个开发人员 | 32h |

| ID | WBS | Task | Duration | Start | Finish | Predecessors | Total slack | Free slack | Constraint | Resources | Work |
| --- | --- | --- | --- | --- | --- | --- | --- | --- | --- | --- | --- |
| 26 | 4.2 | **应用开发** | 30d | 2018-11-05 | 2018-12-14 |  |  |  |  |  | 216h |
| 27 | 4.2.1 | **概要设计** | 5d? | 2018-11-05 | 2018-11-09 |  | 25d |  |  |  |  |
| 28 | 4.2.1.1 | 概要设计 | 5d? | 2018-11-05 | 2018-11-09 |  | 25d |  | finish no earlier than 2018-11-09 |  |  |
| 29 | 4.2.2 | **IRR模块** | 15d | 2018-11-12 | 2018-11-30 |  |  |  |  |  | 120h |
| 30 | 4.2.2.1 | ER图设计 | 5d | 2018-11-12 | 2018-11-16 |  | 291d | 10d | finish no earlier than 2018-11-16 | 1个开发人员 | 40h |
| 31 | 4.2.2.2 | 指标维护 | 3d? | 2018-11-19 | 2018-11-21 |  | 0d |  | finish no earlier than 2018-11-21 | 1个开发人员 | 24h |
| 32 | 4.2.2.3 | 评价计划 | 3d? | 2018-11-22 | 2018-11-26 | 31 | 0d |  |  | 2个开发人员 | 24h |
| 33 | 4.2.2.4 | 指标汇总 | 4d? | 2018-11-27 | 2018-11-30 | 32 | 0d |  |  | 3个开发人员 | 32h |
| 34 | 4.2.3 | **绩效模块** | 10d | 2018-12-03 | 2018-12-14 |  |  |  |  |  | 80h |
| 35 | 4.2.3.1 | 五类指标导入 | 3d | 2018-12-03 | 2018-12-05 | 30 | 281d |  | finish no earlier than 2018-12-05 | 2个开发人员 | 24h |
| 36 | 4.2.3.2 | 绩效考核指标维护 | 3d? | 2018-12-06 | 2018-12-10 |  | 0d |  | finish no earlier than 2018-12-10 | 2个开发人员 | 24h |
| 37 | 4.2.3.3 | 绩效计算与展示 | 4d? | 2018-12-11 | 2018-12-14 | 36 | 0d |  |  | 3个开发人员 | 32h |
| 38 | 4.2.4 | **系统管理** | 12d | 2018-11-19 | 2018-12-04 |  |  |  |  |  | 16h |
| 39 | 4.2.4.1 | 基础数据 | 2d | 2018-11-19 | 2018-11-20 |  | 292d |  | finish no earlier than 2018-11-20 | 开发人员 | 16h |
| 40 | 4.2.4.2 | 其他功能 | 10d? | 2018-11-21 | 2018-12-04 |  | 282d |  | finish no earlier than 2018-12-04 |  |  |
| 41 | 5 | **测试** | 23d | 2018-12-03 | 2019-01-02 |  |  |  |  |  | 184h |
| 42 | 5.1 | **测试准备** | 3d | 2018-12-03 | 2018-12-05 |  |  |  |  |  |  |
| 43 | 5.1.1 | 测试用例 | 3d | 2018-12-03 | 2018-12-05 |  | 281d |  | finish no earlier than 2018-12-05 |  |  |
| 44 | 5.2 | **整体测试** | 23d | 2018-12-03 | 2019-01-02 |  |  |  |  |  | 184h |
| 45 | 5.2.1 | SIT测试 | 8d | 2018-12-03 | 2018-12-12 |  | 261d | 0d | start no earlier than 2018-12-03 | 开发人员 | 64h |
| 46 | 5.2.2 | UAT测试 | 15d | 2018-12-13 | 2019-01-02 | 45 | 261d |  | finish no earlier than 2019-01-02 | 测试人员 | 120h |
| 47 | 6 | **文档** | 7d | 2018-12-17 | 2018-12-25 |  | 267d |  |  |  | 56h |
| 48 | 6.1 | 用户手册 | 3d | 2018-12-17 | 2018-12-19 |  | 267d | 0d | finish no earlier than 2018-12-19 | 测试人员 | 24h |
| 49 | 6.2 | 运维文档 | 2d | 2018-12-20 | 2018-12-21 | 48 | 267d | 0d |  | 测试人员 | 16h |
| 50 | 6.3 | 验收材料 | 2d | 2018-12-24 | 2018-12-25 | 49 | 267d |  | finish no earlier than 2018-12-25 | 测试人员 | 16h |

| ID | WBS | Task | Duration | Start | Finish | Predecessors | Total slack | Free slack | Constraint | Resources | Work |
| --- | --- | --- | --- | --- | --- | --- | --- | --- | --- | --- | --- |
| 51 | 7 | **部署** | 8d | 2018-12-25 | 2019-01-03 |  | 260d |  |  |  | 56h |
| 52 | 7.1 | 部署策略 | 2d | 2018-12-25 | 2018-12-26 |  | 261d | 0d | finish no earlier than 2018-12-26 | 开发人员 | 16h |
| 53 | 7.2 | 相关培训 | 3d | 2018-12-27 | 2018-12-31 | 52 | 261d | 1d | start no earlier than 2018-12-27 | 开发人员 | 24h |
| 54 | 7.3 | 部署软件 | 2d | 2019-01-02 | 2019-01-03 | 53 | 260d |  | finish no earlier than 2019-01-03 | 开发人员 | 16h |
| 55 | 8 | **运维** | 261d | 2019-01-03 | 2020-01-02 |  |  |  |  |  | 2088h |
| 56 | 8.1 | 项目运维 | 261d | 2019-01-03 | 2020-01-02 |  | 0d |  | start no earlier than 2019-01-03 | 开发人员 | 2088h |
