Schedule from MS Project, 2019-11-25 to 2019-12-24.
Microsoft

## Calendars

- 标准: Mon-Fri 08:00-12:00, 13:00-17:00; Sat-Sun off.

## Resources

| Resource |
| --- |
| java1 |
| java2 |

## Schedule

| ID | WBS | Task | Duration | Start | Finish | Predecessors | Total slack | Free slack | Constraint | Resources | Work |
| --- | --- | --- | --- | --- | --- | --- | --- | --- | --- | --- | --- |
| 1 | 1 | **OA对接及授权需求** | 21d | 2019-11-25 | 2019-12-24 |  | 0d |  |  |  | 224h |
| 2 | 1.1 | **OA对接** | 11d | 2019-11-25 | 2019-12-10 |  | 0d |  |  | java1 | 88h |
| 3 | 1.1.1 | 代办任务（http网页接口） | 3d | 2019-11-25 | 2019-11-28 |  | 0d |  |  |  |  |
| 4 | 1.1.2 | OA接口对接 | 5d | 2019-11-28 | 2019-12-05 | 3 | 0d |  |  |  |  |
| 5 | 1.1.3 | 数据接口1(PE号转换) | 3d | 2019-12-05 | 2019-12-10 | 4 | 5d |  |  |  |  |
| 6 | 1.2 | **授权功能** | 17d | 2019-11-25 | 2019-12-18 |  | 0d |  |  | java2 | 136h |
| 7 | 1.2.1 | 授权列表设计、开发 | 4d | 2019-11-25 | 2019-11-29 |  | 4d | 0d |  |  |  |
| 8 | 1.2.2 | 授权功能开发实现 | 4d | 2019-11-29 | 2019-12-05 | 7 | 8d |  | start no earlier than 2019-11-29 |  |  |
| 9 | 1.2.3 | 发送email同时触发OA接口 | 3d | 2019-12-05 | 2019-12-10 | 4, 7 | 0d |  | start no earlier than 2019-12-05 |  |  |
| 10 | 1.2.4 | 任务处理页面调整控制 | 3d | 2019-12-10 | 2019-12-13 | 9 | 0d |  |  |  |  |
| 11 | 1.2.5 | 处理授权任务记录日志 | 3d | 2019-12-13 | 2019-12-18 | 10 | 0d |  |  |  |  |
| 12 | 1.3 | **整体测试** | 4d | 2019-12-18 | 2019-12-24 | 2, 6 | 0d |  |  |  |  |
| 13 | 1.3.1 | 整体测试 | 4d | 2019-12-18 | 2019-12-24 |  | 0d |  |  |  |  |
