# 软件开发

Schedule from MS Project, 2018-09-03 to 2020-01-02.

## Calendars

- 标准: Mon-Fri 08:00-12:00, 13:00-17:00; Sat-Sun off.

## Resources

| Resource |
| --- |
| 管理人员 |
| 项目经理 |
| 分析人员 |
| 开发人员 |
| 测试人员 |
| 培训人员 |
| 技术联络人员 |
| 部署小组 |

## Schedule

| ID | WBS | Task | Type | Duration | Start | Finish | Predecessors | Total slack | Free slack | Constraint | Resources | Work |
| --- | --- | --- | --- | --- | --- | --- | --- | --- | --- | --- | --- | --- |
| 1 | 1 | **项目范围规划** |  | 4d | 2018-09-03 | 2018-09-06 |  | 323d |  |  |  | 24h |
| 2 | 1.1 | 确定项目范围 |  | 3d | 2018-09-03 | 2018-09-05 |  | 323d | 0d |  | 管理人员 | 24h |
| 3 | 1.2 | 项目范围规划完成 |  | 1d | 2018-09-06 | 2018-09-06 | 2 | 39d | 0d |  |  |  |
| 4 | 2 | **需求** |  | 22d | 2018-09-07 | 2018-10-08 |  | 323d |  |  |  | 176h |
| 5 | 2.1 | 需求分析 |  | 22d | 2018-09-07 | 2018-10-08 | 3 | 323d | 0d |  | 分析人员 | 176h |
| 6 | 2.2 | 分析工作完成 | milestone | 0d | 2018-10-08 | 2018-10-08 | 5 | 323d |  |  |  |  |
| 7 | 3 | **设计** |  | 18d | 2018-09-20 | 2018-10-15 |  |  |  |  |  | 144h |
| 8 | 3.1 | 技术架构 |  | 5d | 2018-09-20 | 2018-09-26 |  | 0d |  |  | 技术联络人员 | 40h |
| 9 | 3.2 | 数据库设计 |  | 5d | 2018-09-27 | 2018-10-03 | 8 | 0d |  |  | 开发人员 | 40h |
| 10 | 3.3 | 接口设计 |  | 8d | 2018-10-04 | 2018-10-15 | 9 | 0d |  |  | 开发人员 | 64h |
| 11 | 4 | **开发** |  | 27d | 2018-10-04 | 2018-11-09 |  |  |  |  |  | 336h |
| 12 | 4.1 | 编写代码 |  | 27d | 2018-10-04 | 2018-11-09 |  | 5.25d | 0d | start no earlier than 2018-10-04 | 开发人员 | 216h |
| 13 | 4.2 | 开发人员测试(初步调试) |  | 15d | 2018-10-12 | 2018-11-02 | 12FS-7.5% | 5.25d | 0d |  | 开发人员 | 120h |
| 14 | 4.3 | 开发工作完毕 | milestone | 0d | 2018-11-02 | 2018-11-02 | 13 | 5.25d |  |  |  |  |
| 15 | 5 | **测试** |  | 20d | 2018-11-09 | 2018-12-06 |  |  |  |  |  | 80h |
| 16 | 5.1 | **单元测试** |  | 10d | 2018-11-09 | 2018-11-22 |  | 0d |  |  |  |  |
| 17 | 5.1.1 | 测试用例 |  | 5d | 2018-11-09 | 2018-11-15 |  | 0d |  |  |  |  |
| 18 | 5.1.2 | 单元测试完成 |  | 5d | 2018-11-16 | 2018-11-22 | 17 | 0d |  |  |  |  |
| 19 | 5.2 | **整体测试** |  | 10d | 2018-11-23 | 2018-12-06 |  | 0d |  |  |  | 80h |
| 20 | 5.2.1 | SIT测试 |  | 5d | 2018-11-23 | 2018-11-29 | 18 | 0d |  |  | 测试人员 | 40h |
| 21 | 5.2.2 | UAT测试 |  | 5d | 2018-11-30 | 2018-12-06 | 20 | 0d |  |  | 测试人员 | 40h |
| 22 | 5.2.3 | 整体测试完成 | milestone | 0d | 2018-12-06 | 2018-12-06 | 21 | 0d |  |  |  |  |
| 23 | 6 | **文档** |  | 12d | 2018-11-30 | 2018-12-17 |  | 273d |  |  |  | 96h |
| 24 | 6.1 | 编写用户手册 |  | 10d | 2018-11-30 | 2018-12-13 |  | 273d | 0d | start no earlier than 2018-11-30 | 测试人员 | 80h |
| 25 | 6.2 | 根据反馈修改用户文档 |  | 2d | 2018-12-14 | 2018-12-17 | 24 | 273d | 0d |  | 测试人员 | 16h |
| 26 | 6.3 | 文档完成 | milestone | 0d | 2018-12-17 | 2018-12-17 | 25 | 273d |  |  |  |  |

| ID | WBS | Task | Type | Duration | Start | Finish | Predecessors | Total slack | Free slack | Constraint | Resources | Work |
| --- | --- | --- | --- | --- | --- | --- | --- | --- | --- | --- | --- | --- |
| 27 | 7 | **部署** |  | 5d | 2018-12-19 | 2018-12-25 |  | 267d |  |  |  | 40h |
| 28 | 7.1 | 确定最终部署策略 |  | 1d | 2018-12-19 | 2018-12-19 |  | 267d | 0d | start no earlier than 2018-12-19 | 开发人员 | 8h |
| 29 | 7.2 | 确定部署方法 |  | 1d | 2018-12-20 | 2018-12-20 | 28 | 267d | 0d |  | 开发人员 | 8h |
| 30 | 7.3 | 获得部署所需资源 |  | 1d | 2018-12-21 | 2018-12-21 | 29 | 267d | 0d |  | 开发人员 | 8h |
| 31 | 7.4 | 培训技术支持人员 |  | 1d | 2018-12-24 | 2018-12-24 | 30 | 267d | 0d |  | 开发人员 | 8h |
| 32 | 7.5 | 部署软件 |  | 1d | 2018-12-25 | 2018-12-25 | 31 | 267d | 0d |  | 开发人员 | 8h |
| 33 | 7.6 | 部署工作完成 | milestone | 0d | 2018-12-25 | 2018-12-25 | 32 | 267d |  |  |  |  |
| 34 | 8 | **运维** |  | 261d | 2019-01-03 | 2020-01-02 |  |  |  |  |  | 2088h |
| 35 | 8.1 | 项目运维 |  | 261d | 2019-01-03 | 2020-01-02 |  | 0d |  | start no earlier than 2019-01-03 | 开发人员 | 2088h |
